# ST - Main Plan

How a schedule from ProjectLibre changed from version to version. A marks actual dates.

## Version 1 (saved 2019-08-29)

Note of the change: Added The drafft Project plan for ST

| ID | WBS | Task | Duration | Start | Finish | Predecessors | Constraint |
| --- | --- | --- | --- | --- | --- | --- | --- |
| 1 | 1 | **Iteration 1** | 6000e% | 2019-08-26 | 2019-11-18 |  |  |
| 2 | 1.1 | **Customer File** | 5100e% | 2019-08-26 | 2019-11-05 |  |  |
| 3 |  | Update Customer Address As per SOM | 300e% | 2019-08-26 | 2019-08-28 |  |  |
| 4 |  | Close customer file after any update | 300e% | 2019-08-26 | 2019-08-28 |  |  |
| 5 |  | Make sure everything is added to customer update | 300e% | 2019-08-26 | 2019-08-28 |  |  |
| 6 |  | Update all orders to save process instance ids | 300e% | 2019-08-26 | 2019-08-28 |  |  |
| 7 |  | Show on hold contract in Grid - Open them and Actions is disabled | 100e% | 2019-08-27 | 2019-08-27 |  | start no earlier than 2019-08-27 |
| 8 |  | Customer Search - Implement all cases of search | 300e% | 2019-11-01 | 2019-11-05 | 14 |  |
| 9 | 1.2 | **Telephony** | 4800e% | 2019-08-26 | 2019-10-31 |  |  |
| 10 |  | Update the menu for blocking - Unblocking Contract | 100e% | 2019-08-27 | 2019-08-27 |  | start no earlier than 2019-08-27 |
| 11 |  | Update the Telephony and Change Phone Number to Use the new catalog | 200e% | 2019-08-26 | 2019-08-27 |  |  |
| 12 |  | Update Contract Address | 100e% | 2019-08-29 | 2019-08-29 | 5 | start no earlier than 2019-08-27 |
| 13 |  | Suspend from Customer care request | 100e% | 2019-08-28 | 2019-08-28 | 10 |  |
| 14 |  | Implement Parameters for VAS | 300e% | 2019-10-29 | 2019-10-31 | 77 |  |
| 15 |  | Implement Telephony No Cabling | 300e% | 2019-08-29 | 2019-09-03 | 13 |  |
| 16 | 1.3 | **XDSL** | 1900e% | 2019-08-26 | 2019-09-20 |  |  |
| 17 |  | Creation of contract on BSCS | 300e% | 2019-08-26 | 2019-08-28 |  |  |
| 18 |  | ADSL Subscription Request | 200e% | 2019-08-30 | 2019-09-03 | 12, 17 |  |
| 19 |  | ADSL Reset Password | 100e% | 2019-09-04 | 2019-09-04 | 18 | start no earlier than 2019-09-04 |
| 20 |  | ADSL Alter Speed | 100e% | 2019-09-05 | 2019-09-05 | 19 |  |
| 21 |  | ADSL Termination | 100e% | 2019-09-06 | 2019-09-06 | 20 |  |
| 22 |  | ADSL Line Moving | 100e% | 2019-09-10 | 2019-09-10 | 21 | start no earlier than 2019-09-10 |
| 23 |  | Contract Take Over | 100e% | 2019-09-11 | 2019-09-11 | 22 |  |
| 24 |  | GHDSL subscription | 200e% | 2019-09-12 | 2019-09-13 | 23 |  |
| 25 |  | Test ADSL as overall | 300e% | 2019-09-16 | 2019-09-18 | 24 |  |
| 26 |  | Deliver ADSL in a version | 200e% | 2019-09-19 | 2019-09-20 | 25 |  |
| 27 | 1.4 | **Leased Line** | 1500e% | 2019-08-26 | 2019-09-16 |  |  |
| 28 |  | LL Contract Creation on BSCS | 300e% | 2019-08-26 | 2019-08-28 |  |  |
| 29 |  | LL Subscription | 200e% | 2019-08-29 | 2019-09-03 | 7, 28 | start no earlier than 2019-08-27 |
| 30 |  | LL Termination | 100e% | 2019-09-04 | 2019-09-04 | 29 |  |
| 31 |  | LL Last Mile Change | 100e% | 2019-09-09 | 2019-09-09 | 30 | start no earlier than 2019-09-09 |
| 32 |  | Test Leased Line | 300e% | 2019-09-10 | 2019-09-12 | 31 |  |
| 33 |  | Deliver LL in a version | 200e% | 2019-09-13 | 2019-09-16 | 32 |  |
| 34 | 1.5 | **Billing** | 1300e% | 2019-09-04 | 2019-09-20 |  |  |
| 35 |  | Implement the BOD as requests simulate and real | 300e% | 2019-09-04 | 2019-09-06 | 15 |  |
| 36 |  | Invoices | 200e% | 2019-09-09 | 2019-09-10 | 35 |  |
| 37 |  | Administrative Complaints | 300e% | 2019-09-11 | 2019-09-13 | 36 |  |
| 38 |  | Akshay to provide us with APIs of installments | 100e% | 2019-09-11 | 2019-09-11 | 36 |  |
| 39 |  | Rodi to Check the provided APIs and do his testing | 200e% | 2019-09-12 | 2019-09-13 | 38 |  |
| 40 |  | Implement Installments | 400e% | 2019-09-16 | 2019-09-19 | 39 |  |
| 41 |  | Implement Payment Arrangement | 300e% | 2019-09-16 | 2019-09-18 | 37 |  |
| 42 |  | Check Payments and Credit Notes | 200e% | 2019-09-19 | 2019-09-20 | 41 |  |
| 43 | 1.6 | **Account** | 2000e% | 2019-09-11 | 2019-10-08 |  |  |
| 44 |  | Data Model from E | 100e% | 2019-09-11 | 2019-09-11 |  | start no earlier than 2019-09-11 |
| 45 |  | Account File Creation | 200e% | 2019-09-19 | 2019-09-20 | 25, 44 |  |
| 46 |  | Account File Management | 100e% | 2019-09-23 | 2019-09-23 | 45 |  |
| 47 |  | Account File Requests | 200e% | 2019-09-26 | 2019-09-27 | 46 | start no earlier than 2019-09-26 |
| 48 |  | Changes on Contract Details | 200e% | 2019-09-30 | 2019-10-01 | 47 |  |
| 49 |  | Testing for All Requests on Account | 300e% | 2019-10-02 | 2019-10-04 | 48 |  |
| 50 |  | Deliver Account in a version | 200e% | 2019-10-07 | 2019-10-08 | 49 |  |
| 51 | 1.7 | **Work Orders** | 1200e% | 2019-09-10 | 2019-09-25 |  |  |
| 52 |  | Implement Site for Work Orders | 100e% | 2019-09-13 | 2019-09-13 | 32 |  |
| 53 |  | Work orders diagrams from Ali Younes | 100e% | 2019-09-10 | 2019-09-10 |  | start no earlier than 2019-09-10 |
| 54 |  | Implement Work Orders for Tel | 300e% | 2019-09-11 | 2019-09-13 | 53 |  |
| 55 |  | Implement Work Orders for XDSL | 300e% | 2019-09-16 | 2019-09-18 | 54 |  |
| 56 |  | Implement Work Orders for LL | 300e% | 2019-09-19 | 2019-09-23 | 55 |  |
| 57 |  | Delivery work orders in a version | 200e% | 2019-09-24 | 2019-09-25 | 56 |  |
| 58 | 1.8 | **Print Templates** | 1700e% | 2019-09-13 | 2019-10-07 |  |  |
| 59 |  | Templates from Fidaa | 100e% | 2019-09-13 | 2019-09-13 |  | start no earlier than 2019-09-13 |
| 60 |  | Templates for Tel | 300e% | 2019-09-23 | 2019-09-25 | 42 |  |
| 61 |  | Templates for XDSL | 200e% | 2019-09-26 | 2019-09-27 | 60 |  |
| 62 |  | Templates for LL | 200e% | 2019-09-30 | 2019-10-01 | 61 |  |
| 63 |  | Templates for Ticketing | 200e% | 2019-10-02 | 2019-10-03 | 62 |  |
| 64 |  | Deliver templates in a version | 200e% | 2019-10-04 | 2019-10-07 | 63 |  |
| 65 | 1.9 | **Access Rights** | 3200e% | 2019-09-13 | 2019-10-28 |  |  |
| 66 |  | Analysis part for every action | 200e% | 2019-09-13 | 2019-09-16 |  | start no earlier than 2019-09-13 |
| 67 |  | Permissions on the level of Contracts | 200e% | 2019-10-02 | 2019-10-03 | 62 |  |
| 68 |  | CRUD permissions for Customer and Account Files | 100e% | 2019-10-04 | 2019-10-04 | 67 |  |
| 69 |  | Check if Read is prevented programatically nothing is afected | 100e% | 2019-10-07 | 2019-10-07 | 68 |  |
| 70 |  | Filter Work Orders per teams | 200e% | 2019-10-08 | 2019-10-09 | 69 |  |

| ID | WBS | Task | Duration | Start | Finish | Predecessors | Constraint |
| --- | --- | --- | --- | --- | --- | --- | --- |
| 71 |  | Security on Billing Tab in Customer and Account Files | 100e% | 2019-10-10 | 2019-10-10 | 70 | start no earlier than 2019-10-10 |
| 72 |  | Security on grids and custom fields in contract details (billing related) | 100e% | 2019-10-11 | 2019-10-11 | 71 |  |
| 73 |  | Secuity on Actions in customer file and contract details | 200e% | 2019-10-14 | 2019-10-15 | 72 |  |
| 74 |  | Catalog for Call Center (specify services and Roles) | 200e% | 2019-10-17 | 2019-10-18 | 73 | start no earlier than 2019-10-17 |
| 75 |  | Security on Payment Step (cash - invoice) | 100e% | 2019-10-21 | 2019-10-21 | 74 |  |
| 76 |  | Hide built in functionalities that are not ST related | 200e% | 2019-10-22 | 2019-10-23 | 75 |  |
| 77 |  | Deliver Access Rights in a version | 300e% | 2019-10-24 | 2019-10-28 | 76 |  |
| 78 | 1.10 | **Waiting List** | 700e% | 2019-09-24 | 2019-10-02 |  |  |
| 79 |  | Waiting List Pool | 100e% | 2019-09-24 | 2019-09-24 | 56 |  |
| 80 |  | Changes in Requests | 100e% | 2019-09-27 | 2019-09-27 | 79 | start no earlier than 2019-09-27 |
| 81 |  | 45 days feature | 300e% | 2019-09-30 | 2019-10-02 | 80 |  |
| 82 | 1.11 | **Ticketing** | 2200e% | 2019-09-16 | 2019-10-15 |  |  |
| 83 |  | Review and notes for ticketing field from E | 100e% | 2019-09-16 | 2019-09-16 | 37 |  |
| 84 |  | Technical Complaint Changes | 100e% | 2019-10-07 | 2019-10-07 | 49, 83 |  |
| 85 |  | Administrative Complaints Changes | 100e% | 2019-10-10 | 2019-10-10 | 84 | start no earlier than 2019-10-10 |
| 86 |  | Ticketing Grid | 300e% | 2019-10-11 | 2019-10-15 | 85 |  |
| 87 | 1.12 | **Directory Inquiry** | 1400e% | 2019-09-18 | 2019-10-07 |  |  |
| 88 |  | Akshay to provide NK APIs for DN | 100e% | 2019-09-18 | 2019-09-18 |  | start no earlier than 2019-09-18 |
| 89 |  | Analysis stage | 200e% | 2019-09-20 | 2019-09-23 | 40, 88 | start no earlier than 2019-09-19 |
| 90 |  | Implement Catalog for Directory Inquiry | 100e% | 2019-09-24 | 2019-09-24 | 89 |  |
| 91 |  | Public Directory Inquiry | 200e% | 2019-09-25 | 2019-09-26 | 90 |  |
| 92 |  | Professional Directory Inquiry | 200e% | 2019-09-27 | 2019-09-30 | 91 |  |
| 93 |  | Search public directory inquiry | 200e% | 2019-10-01 | 2019-10-02 | 92 |  |
| 94 |  | Search professional direclty inquiry | 100e% | 2019-10-03 | 2019-10-03 | 93 |  |
| 95 |  | Delivery and testing | 200e% | 2019-10-04 | 2019-10-07 | 94 |  |
| 96 | 1.13 | **CTI** | 1100e% | 2019-10-02 | 2019-10-16 |  |  |
| 97 |  | Investigation with Nabil | 100e% | 2019-10-02 | 2019-10-02 |  | start no earlier than 2019-10-02 |
| 98 |  | Analysis part | 300e% | 2019-10-03 | 2019-10-07 | 97 |  |
| 99 |  | Impelemntation in CRM | 700e% | 2019-10-08 | 2019-10-16 | 81, 98 |  |
| 100 | 1.14 | **Catalog & Settings** | 200e% | 2019-10-08 | 2019-10-09 |  |  |
| 101 |  | Update the catalog of packages to retreive the packages from BSCS | 200e% | 2019-10-08 | 2019-10-09 | 95 |  |
| 102 | 1.15 | **SOM** | 900e% | 2019-09-11 | 2019-09-23 |  |  |
| 103 |  | Make sure Dunning Processes are working correctly | 100e% | 2019-09-11 | 2019-09-11 |  | start no earlier than 2019-09-11 |
| 104 |  | Create implicit Requests for SOM Orders | 200e% | 2019-09-12 | 2019-09-13 | 103 |  |
| 105 |  | Prepare work orders for EDA | 200e% | 2019-09-16 | 2019-09-17 | 104 |  |
| 106 |  | Logging requests and Workflows | 200e% | 2019-09-18 | 2019-09-19 | 105 |  |
| 107 |  | Bulk Actions | 200e% | 2019-09-20 | 2019-09-23 | 106 |  |
| 108 | 1.16 | **Reporting** | 4900e% | 2019-09-11 | 2019-11-18 |  |  |
| 109 |  | Analysis and decision on Dev Express | 300e% | 2019-09-11 | 2019-09-13 |  | start no earlier than 2019-09-11 |
| 110 |  | Analysis for all Reports | 200e% | 2019-09-16 | 2019-09-17 | 109 |  |
| 111 |  | Subscription Reports | 300e% | 2019-10-24 | 2019-10-28 | 76, 110 |  |
| 112 |  | Complaints Reports | 200e% | 2019-10-29 | 2019-10-30 | 111 |  |
| 113 |  | Operations Reports | 200e% | 2019-10-31 | 2019-11-01 | 112 |  |
| 114 |  | Suspension Reports | 200e% | 2019-11-04 | 2019-11-05 | 113 |  |
| 115 |  | Waiting Lists Reports | 200e% | 2019-11-06 | 2019-11-07 | 114 |  |
| 116 |  | ADSL Reports | 200e% | 2019-11-08 | 2019-11-11 | 115 |  |
| 117 |  | Change Number Reports | 100e% | 2019-11-12 | 2019-11-12 | 116 |  |
| 118 |  | Other Reports | 200e% | 2019-11-13 | 2019-11-14 | 117 |  |
| 119 |  | Deliver Reporting in a version | 200e% | 2019-11-15 | 2019-11-18 | 118 |  |
| 120 | 1.17 | **Localization** | 2100e% | 2019-09-24 | 2019-10-22 |  |  |
| 121 |  | Update all messages to have keys | 100e% | 2019-10-01 | 2019-10-01 |  | start no earlier than 2019-10-01 |
| 122 |  | Update messages text after review with Fidaa | 300e% | 2019-10-02 | 2019-10-04 | 121 |  |
| 123 |  | Prepare the sheet to send to ST | 200e% | 2019-09-24 | 2019-09-25 | 107 |  |
| 124 |  | E/// to translate | 300e% | 2019-09-26 | 2019-09-30 | 123 |  |
| 125 |  | Import translation into BPM | 100e% | 2019-10-16 | 2019-10-16 | 86, 124 |  |
| 126 |  | Testing localization - Dev test | 200e% | 2019-10-17 | 2019-10-18 | 125 |  |
| 127 |  | Deliver Localization in a version | 200e% | 2019-10-21 | 2019-10-22 | 126 |  |

## Version 2 (saved 2019-09-03)

Note of the change: update the plan for ST

Last finish stays 2019-11-18.

Changed:

| ID | Task | Start | Finish | Duration | Other |
| --- | --- | --- | --- | --- | --- |
| 1 | **Phase 1** |  |  |  | was named Iteration 1 |
| 34 | **Billing** |  | 2019-09-20 → 2019-09-24 (+4d) | 1300e% → 1500e% |  |
| 38 | Akshay to provide us with APIs of installments |  | 2019-09-11 → 2019-09-16 (+5d) | 100e% → 400e% |  |
| 39 | Rodi to Check the provided APIs and do his testing | 2019-09-12 → 2019-09-17 (+5d) | 2019-09-13 → 2019-09-18 (+5d) |  |  |
| 40 | Implement Installments | 2019-09-16 → 2019-09-19 (+3d) | 2019-09-19 → 2019-09-24 (+5d) |  |  |
| 44 | Data Model from E |  | 2019-09-11 → 2019-09-16 (+5d) | 100e% → 400e% |  |
| 87 | **Directory Inquiry** |  | 2019-10-07 → 2019-10-10 (+3d) | 1400e% → 1700e% |  |
| 89 | Analysis stage | 2019-09-20 → 2019-09-25 (+5d) | 2019-09-23 → 2019-09-26 (+3d) |  |  |
| 90 | Implement Catalog for Directory Inquiry | 2019-09-24 → 2019-09-27 (+3d) | 2019-09-24 → 2019-09-27 (+3d) |  |  |
| 91 | Public Directory Inquiry | 2019-09-25 → 2019-09-30 (+5d) | 2019-09-26 → 2019-10-01 (+5d) |  |  |
| 92 | Professional Directory Inquiry | 2019-09-27 → 2019-10-02 (+5d) | 2019-09-30 → 2019-10-03 (+3d) |  |  |
| 93 | Search public directory inquiry | 2019-10-01 → 2019-10-04 (+3d) | 2019-10-02 → 2019-10-07 (+5d) |  |  |
| 94 | Search professional direclty inquiry | 2019-10-03 → 2019-10-08 (+5d) | 2019-10-03 → 2019-10-08 (+5d) |  |  |
| 95 | Delivery and testing | 2019-10-04 → 2019-10-09 (+5d) | 2019-10-07 → 2019-10-10 (+3d) |  |  |
| 100 | **Catalog & Settings** | 2019-10-08 → 2019-10-11 (+3d) | 2019-10-09 → 2019-10-14 (+5d) |  |  |
| 101 | Update the catalog of packages to retreive the packages from BSCS | 2019-10-08 → 2019-10-11 (+3d) | 2019-10-09 → 2019-10-14 (+5d) |  |  |

## Version 3 (saved 2019-09-09)

Note of the change: Applied changes to the Project plan and added a new interface sheet

Last finish stays 2019-11-18.

Changed:

| ID | Task | Start | Finish | Duration | Other |
| --- | --- | --- | --- | --- | --- |
| 1 | **Phase 1** |  |  | 6000e% → 5900e% |  |
| 2 | **Customer File** |  |  | 5100e% → 5000e% |  |
| 9 | **Telephony** |  |  | 4800e% → 4700e% |  |
| 16 | **XDSL** |  | 2019-09-20 → 2019-09-23 (+3d) |  |  |
| 22 | ADSL Line Moving | 2019-09-10 → 2019-09-11 (+1d) | 2019-09-10 → 2019-09-11 (+1d) |  | constraint start no earlier than 2019-09-10 → start no earlier than 2019-09-11 |
| 23 | Contract Take Over | 2019-09-11 → 2019-09-12 (+1d) | 2019-09-11 → 2019-09-12 (+1d) |  |  |
| 24 | GHDSL subscription | 2019-09-12 → 2019-09-13 (+1d) | 2019-09-13 → 2019-09-16 (+3d) |  |  |
| 25 | Test ADSL as overall | 2019-09-16 → 2019-09-17 (+1d) | 2019-09-18 → 2019-09-19 (+1d) |  |  |
| 26 | Deliver ADSL in a version | 2019-09-19 → 2019-09-20 (+1d) | 2019-09-20 → 2019-09-23 (+3d) |  |  |
| 27 | **Leased Line** |  |  | 1500e% → 1400e% |  |
| 34 | **Billing** |  |  | 1500e% → 1400e% |  |
| 45 | Account File Creation | 2019-09-19 → 2019-09-20 (+1d) | 2019-09-20 → 2019-09-23 (+3d) |  |  |
| 46 | Account File Management | 2019-09-23 → 2019-09-24 (+1d) | 2019-09-23 → 2019-09-24 (+1d) |  |  |
| 51 | **Work Orders** |  |  | 1200e% → 1100e% |  |
